# Meridian Data Centre - Phase 1 (Nashik, 24MW, Rated-3/Tier III)

Schedule from Primavera P6, 2025-12-01 to 2026-12-25, data date 2026-07-20, A marks actual dates.
Must finish by 2026-12-25

## Calendars

- Std 5-Day Workweek: Mon-Fri 08:00-12:00, 13:00-17:00; Sat-Sun off.

## Schedule

| ID | WBS | Activity | Duration | Start | Finish | Predecessors | Complete | Remaining | Planned start | Planned finish | Total float |
| --- | --- | --- | --- | --- | --- | --- | --- | --- | --- | --- | --- |
|  | ENG | **Engineering & Design** |  | 2025-12-01 | 2026-02-26 |  |  |  |  |  |  |
| ACT-001 |  | Project Mobilization & Site Establishment | 5d | 2025-12-01 A | 2025-12-05 A |  | 100% |  |  |  |  |
| ACT-002 |  | Geotechnical Investigation & Topographic Survey | 10d | 2025-12-08 A | 2025-12-19 A | ACT-001 | 100% |  |  |  |  |
| ACT-003 |  | Basis of Design & Critical Load Calculations | 15d | 2025-12-22 A | 2026-01-09 A | ACT-002 | 100% |  |  |  |  |
| ACT-006 |  | Structural & Architectural Design | 18d | 2025-12-22 A | 2026-01-14 A | ACT-002 | 100% |  |  |  |  |
| ACT-004 |  | Electrical SLD & Power System Design | 20d | 2026-01-12 A | 2026-02-06 A | ACT-003 | 100% |  |  |  |  |
| ACT-005 |  | Mechanical & Cooling System Design | 20d | 2026-01-12 A | 2026-02-06 A | ACT-003 | 100% |  |  |  |  |
| ACT-007 |  | Fire Detection & Suppression Design | 12d | 2026-01-12 A | 2026-01-27 A | ACT-003 | 100% |  |  |  |  |
| ACT-008 |  | IEEE 1584 Arc-Flash & Protective Coordination Study | 14d | 2026-02-09 A | 2026-02-26 A | ACT-004 | 100% |  |  |  |  |
| ACT-009 |  | Issue-For-Construction (IFC) Drawing Package | 10d | 2026-02-09 A | 2026-02-20 A | ACT-004, ACT-005, ACT-006, ACT-007 | 100% |  |  |  |  |
|  | PRC | **Procurement (Long-Lead Equipment)** |  | 2026-02-09 | 2026-08-13 |  |  |  |  |  |  |
| ACT-010 |  | UPS System - Technical Bid Evaluation | 12d | 2026-02-09 A | 2026-02-24 A | ACT-004 | 100% |  |  |  |  |
| ACT-015 |  | Standby Generator Set - Purchase & Manufacturing | 65d | 2026-02-09 A | 2026-05-08 A | ACT-004 | 100% |  |  |  |  |
| ACT-017 |  | Chiller Plant - Purchase & Manufacturing | 60d | 2026-02-09 A | 2026-05-01 A | ACT-005 | 100% |  |  |  |  |
| ACT-021 |  | CRAH Units - Procurement & Delivery | 40d | 2026-02-09 A | 2026-04-03 A | ACT-005 | 100% |  |  |  |  |
| ACT-022 |  | PDU & Overhead Busway - Procurement & Delivery | 35d | 2026-02-09 A | 2026-03-27 A | ACT-004 | 100% |  |  |  |  |
| ACT-011 |  | UPS System - Purchase Order Award | 5d | 2026-02-25 A | 2026-03-03 A | ACT-010 | 100% |  |  |  |  |
| ACT-019 |  | MV Switchgear - Purchase & Manufacturing | 55d | 2026-02-27 A | 2026-05-14 A | ACT-004, ACT-008 | 100% |  |  |  |  |
| ACT-012 |  | UPS-02A - Manufacturing & Factory Build | 80d | 2026-03-04 A | 2026-06-23 A | ACT-011 | 100% |  |  |  |  |
| ACT-018 |  | Chiller - Delivery & Receiving Inspection | 8d | 2026-05-04 A | 2026-05-13 A | ACT-017 | 100% |  |  |  |  |
| ACT-016 |  | Generator - Delivery & Receiving Inspection | 8d | 2026-05-11 A | 2026-05-20 A | ACT-015 | 100% |  |  |  |  |
| ACT-020 |  | MV Switchgear - Delivery & Receiving Inspection | 7d | 2026-05-15 A | 2026-05-25 A | ACT-019 | 100% |  |  |  |  |
| ACT-013 |  | UPS-02A - Factory Acceptance Test (FAT) | 6d | 2026-06-24 A | 2026-07-01 A | ACT-012 | 100% |  |  |  |  |
| ACT-014 |  | UPS-02A - Delivery to Site & Receiving Inspection | 10d | 2026-07-02 A | 2026-08-13 | ACT-013 | 50% | 5d | 2026-07-02 | 2026-07-15 | 0d |

| ID | WBS | Activity | Type | Duration | Start | Finish | Predecessors | Complete | Planned start | Planned finish | Total float |
| --- | --- | --- | --- | --- | --- | --- | --- | --- | --- | --- | --- |
|  | CIV | **Civil & Structural** |  |  | 2025-12-22 | 2026-06-03 |  |  |  |  |  |
| ACT-023 |  | Site Grading & Bulk Excavation |  | 12d | 2025-12-22 A | 2026-01-06 A | ACT-002 | 100% |  |  |  |
| ACT-024 |  | Foundations & Pile Caps |  | 20d | 2026-01-15 A | 2026-02-11 A | ACT-023, ACT-006 | 100% |  |  |  |
| ACT-025 |  | Ground Floor Slab-on-Grade |  | 12d | 2026-02-12 A | 2026-02-27 A | ACT-024 | 100% |  |  |  |
| ACT-026 |  | Superstructure & Roof Deck |  | 30d | 2026-03-02 A | 2026-04-10 A | ACT-025 | 100% |  |  |  |
| ACT-027 |  | Building Envelope & Weatherproofing |  | 18d | 2026-04-13 A | 2026-05-06 A | ACT-026 | 100% |  |  |  |
| ACT-029 |  | Electrical Room & Plant Room Construction |  | 16d | 2026-04-13 A | 2026-05-04 A | ACT-026 | 100% |  |  |  |
| ACT-028 |  | Data Hall Fit-Out & Raised Access Floor |  | 20d | 2026-05-07 A | 2026-06-03 A | ACT-027 | 100% |  |  |  |
|  | ELE | **Electrical Installation** |  |  | 2026-05-05 | 2026-09-30 |  |  |  |  |  |
| ACT-030 |  | Primary Cable Containment & Tray Systems |  | 15d | 2026-05-05 A | 2026-05-25 A | ACT-029 | 100% |  |  |  |
| ACT-032 |  | Generator Installation & Fuel Oil System |  | 14d | 2026-05-21 A | 2026-06-09 A | ACT-016, ACT-029 | 100% |  |  |  |
| ACT-031 |  | MV Switchgear Installation |  | 12d | 2026-05-26 A | 2026-06-10 A | ACT-020, ACT-029 | 100% |  |  |  |
| ACT-037 |  | Earthing, Bonding & Lightning Protection |  | 10d | 2026-05-26 A | 2026-06-08 A | ACT-030 | 100% |  |  |  |
| ACT-035 |  | PDU & Busway Installation |  | 12d | 2026-06-04 A | 2026-06-19 A | ACT-022, ACT-028 | 100% |  |  |  |
| ACT-038 |  | Fire Detection & Suppression Installation |  | 14d | 2026-06-04 A | 2026-06-23 A | ACT-028 | 100% |  |  |  |
| ACT-033 |  | UPS-02A Installation & Alignment |  | 10d | 2026-08-14 | 2026-08-27 | ACT-014, ACT-031 |  | 2026-07-16 | 2026-07-29 | 0d |
| ACT-034 |  | UPS-02A Battery System Installation |  | 8d | 2026-08-28 | 2026-09-08 | ACT-033 |  | 2026-07-30 | 2026-08-10 | 0d |
| ACT-036 |  | LV Distribution & Final Circuits |  | 16d | 2026-09-09 | 2026-09-30 | ACT-035, ACT-034 |  | 2026-08-11 | 2026-09-01 | 30d |
|  | MEC | **Mechanical & Cooling** |  |  | 2026-05-14 | 2026-07-16 |  |  |  |  |  |
| ACT-039 |  | Chilled Water Piping & Pumps |  | 18d | 2026-05-14 A | 2026-06-08 A | ACT-018, ACT-029 | 100% |  |  |  |
| ACT-041 |  | CRAH Unit Installation |  | 14d | 2026-06-04 A | 2026-06-23 A | ACT-021, ACT-028 | 100% |  |  |  |
| ACT-040 |  | Chiller Plant Installation |  | 12d | 2026-06-09 A | 2026-06-24 A | ACT-018, ACT-039 | 100% |  |  |  |
| ACT-042 |  | BMS & Controls Installation |  | 16d | 2026-06-25 A | 2026-07-16 A | ACT-040, ACT-041 | 100% |  |  |  |
|  | CXA | **Integrated Testing & Commissioning** |  |  | 2026-10-01 | 2026-12-25 |  |  |  |  |  |
| ACT-043 |  | Cable Testing & Point-to-Point Checks |  | 10d | 2026-10-01 | 2026-10-14 | ACT-036, ACT-037 |  | 2026-09-02 | 2026-09-15 | 30d |
| ACT-044 |  | MV Switchgear Energisation |  | 6d | 2026-10-15 | 2026-10-22 | ACT-031, ACT-043 |  | 2026-09-16 | 2026-09-23 | 30d |
| ACT-045 |  | Generator Load-Bank Test (Level 3) |  | 8d | 2026-10-23 | 2026-11-03 | ACT-032, ACT-044 |  | 2026-09-24 | 2026-10-05 | 30d |
| ACT-046 |  | UPS-02A Commissioning & Retransfer Test |  | 8d | 2026-10-23 | 2026-11-03 | ACT-034, ACT-044 |  | 2026-09-24 | 2026-10-05 | 0d |
| ACT-047 |  | Mechanical Systems Commissioning (Level 3) |  | 10d | 2026-10-23 | 2026-11-05 | ACT-042, ACT-044 |  | 2026-09-24 | 2026-10-07 | 30d |
| ACT-048 |  | Integrated Systems Test (IST) - Level 4 |  | 12d | 2026-11-06 | 2026-11-23 | ACT-045, ACT-046, ACT-047 |  | 2026-10-08 | 2026-10-23 | 0d |
| ACT-049 |  | Integrated Systems Test - Level 5 (Black Building) |  | 8d | 2026-11-24 | 2026-12-03 | ACT-048 |  | 2026-10-26 | 2026-11-04 | 0d |
| ACT-050 |  | Reliability / 96-Hour Demonstration Test |  | 5d | 2026-12-04 | 2026-12-10 | ACT-049 |  | 2026-11-05 | 2026-11-11 | 0d |
| ACT-051 |  | Punchlist, De-snag & Handover Documentation |  | 10d | 2026-12-11 | 2026-12-24 | ACT-050 |  | 2026-11-12 | 2026-11-25 | 0d |
| ACT-052 |  | Rated-3 (TIA-942) / Tier III (Uptime) Commissioning Complete | milestone | 0d | 2026-12-25 | 2026-12-25 | ACT-051 |  | 2026-11-26 | 2026-11-26 | 0d |
